# 喷砂油漆 Sandblasting and painting work

How a schedule from a web Gantt chart changed from version to version. A marks actual dates.

## Version 1 (saved 2026-04-07)

| ID | WBS | Task | Duration | Start | Finish | Predecessors | Complete |
| --- | --- | --- | --- | --- | --- | --- | --- |
| 2 | 1 | **BOX18、19** | 12d | 2026-04-06 | 2026-04-17 |  | 11% |
| 3 |  | 初喷 Initial sandblasting | 1d | 2026-04-06 | 2026-04-06 |  | 100% |
| 4 |  | 返修 Defect repair process | 4d | 2026-04-07 | 2026-04-10 | 3 | 60% |
| 5 |  | 复喷 Second sandblasting process | 1d | 2026-04-11 | 2026-04-11 | 4 |  |
| 6 |  | 底漆-1号 Priming coat - Room 1 of Paint Warehouse | 2d | 2026-04-12 | 2026-04-13 | 5 |  |
| 7 |  | 中间漆-1号 Intermediate coat- Room 1 of Paint Warehouse | 2d | 2026-04-14 | 2026-04-15 | 6 |  |
| 8 |  | 面漆-1号 Final coat- Room 1 of Paint Warehouse | 2d | 2026-04-16 | 2026-04-17 | 7 |  |
| 9 | 2 | **BOX20、21** | 15d | 2026-04-07 | 2026-04-21 |  |  |
| 10 |  | 初喷 Initial sandblasting | 1d | 2026-04-07 | 2026-04-07 | 3 |  |
| 11 |  | 返修 Defect repair proces | 4d | 2026-04-11 | 2026-04-14 | 4 |  |
| 12 |  | 复喷 Second sandblasting process | 1d | 2026-04-15 | 2026-04-15 | 11 |  |
| 13 |  | 底漆-2号 Priming coat - Room 2 of Paint Warehouse | 2d | 2026-04-16 | 2026-04-17 | 12 |  |
| 14 |  | 中间漆-2号 Intermediate coat- Room 2 of Paint Warehouse | 2d | 2026-04-18 | 2026-04-19 | 13 |  |
| 15 |  | 面漆-2号 Final coat- Room 2 of Paint Warehouse | 2d | 2026-04-20 | 2026-04-21 | 14 |  |
| 16 | 3 | **BOX11、12** | 16d | 2026-04-08 | 2026-04-23 |  |  |
| 17 |  | 初喷 Initial sandblasting | 1d | 2026-04-08 | 2026-04-08 | 10 |  |
| 18 |  | 返修 Defect repair proces | 2d | 2026-04-09 | 2026-04-10 | 17 |  |
| 19 |  | 复喷 Second sandblasting process | 1d | 2026-04-11 | 2026-04-11 | 18 |  |
| 20 |  | 底漆-1号 Priming coat - Room 1 of Paint Warehouse | 2d | 2026-04-18 | 2026-04-19 | 19, 8 |  |
| 21 |  | 中间漆-1号 Intermediate coat- Room 1 of Paint Warehouse | 2d | 2026-04-20 | 2026-04-21 | 20 |  |
| 22 |  | 面漆-1号 Final coat- Room 1 of Paint Warehouse | 2d | 2026-04-22 | 2026-04-23 | 21 |  |
| 23 | 4 | **BOX6、7** | 19d | 2026-04-09 | 2026-04-27 |  |  |
| 24 |  | 初喷 Initial sandblasting | 1d | 2026-04-09 | 2026-04-09 | 17 |  |
| 25 |  | 返修 Defect repair proces | 2d | 2026-04-11 | 2026-04-12 | 24, 18 |  |
| 26 |  | 复喷 Second sandblasting process | 1d | 2026-04-13 | 2026-04-13 | 25 |  |
| 27 |  | 底漆-2号 Priming coat - Room 2 of Paint Warehouse | 2d | 2026-04-22 | 2026-04-23 | 26, 15 |  |
| 28 |  | 中间漆-2号 Intermediate coat- Room 2 of Paint Warehouse | 2d | 2026-04-24 | 2026-04-25 | 27 |  |
| 29 |  | 面漆-2号 Final coat- Room 2 of Paint Warehouse | 2d | 2026-04-26 | 2026-04-27 | 28 |  |
| 30 | 5 | **BOX8、10** | 20d | 2026-04-10 | 2026-04-29 |  |  |
| 31 |  | 初喷 Initial sandblasting | 1d | 2026-04-10 | 2026-04-10 | 24 |  |
| 32 |  | 返修 Defect repair proces | 2d | 2026-04-13 | 2026-04-14 | 31, 25 |  |
| 33 |  | 复喷 Second sandblasting process | 1d | 2026-04-15 | 2026-04-15 | 32 |  |
| 34 |  | 底漆-1号 Priming coat - Room 1 of Paint Warehouse | 2d | 2026-04-24 | 2026-04-25 | 33, 22 |  |
| 35 |  | 中间漆-1号 Intermediate coat- Room 1 of Paint Warehouse | 2d | 2026-04-26 | 2026-04-27 | 34 |  |
| 36 |  | 面漆-1号 Final coat- Room 1 of Paint Warehouse | 2d | 2026-04-28 | 2026-04-29 | 35 |  |
| 37 | 6 | **BOX14、1** | 23d | 2026-04-11 | 2026-05-03 |  |  |
| 38 |  | 初喷 Initial sandblasting | 1d | 2026-04-11 | 2026-04-11 | 31 |  |
| 39 |  | 返修 Defect repair proces | 2d | 2026-04-15 | 2026-04-16 | 38, 32 |  |
| 40 |  | 复喷 Second sandblasting process | 1d | 2026-04-17 | 2026-04-17 | 39 |  |
| 41 |  | 底漆-2号 Priming coat - Room 2 of Paint Warehouse | 2d | 2026-04-28 | 2026-04-29 | 40, 29 |  |
| 42 |  | 中间漆-2号 Intermediate coat- Room 2 of Paint Warehouse | 2d | 2026-04-30 | 2026-05-01 | 41 |  |
| 43 |  | 面漆-2号 Final coat- Room 2 of Paint Warehouse | 2d | 2026-05-02 | 2026-05-03 | 42 |  |
| 44 | 7 | **BOX2、3** | 24d | 2026-04-12 | 2026-05-05 |  |  |
| 45 |  | 初喷 Initial sandblasting | 1d | 2026-04-12 | 2026-04-12 | 38 |  |
| 46 |  | 返修 Defect repair proces | 2d | 2026-04-17 | 2026-04-18 | 45, 39 |  |
| 47 |  | 复喷 Second sandblasting process | 1d | 2026-04-19 | 2026-04-19 | 46 |  |
| 48 |  | 底漆-1号 Priming coat - Room 1 of Paint Warehouse | 2d | 2026-04-30 | 2026-05-01 | 47, 36 |  |
| 49 |  | 中间漆-1号 Intermediate coat- Room 1 of Paint Warehouse | 2d | 2026-05-02 | 2026-05-03 | 48 |  |
| 50 |  | 面漆-1号 Final coat- Room 1 of Paint Warehouse | 2d | 2026-05-04 | 2026-05-05 | 49 |  |
| 51 | 8 | **BOX4、5** | 27d | 2026-04-13 | 2026-05-09 |  |  |
| 52 |  | 初喷 Initial sandblasting | 1d | 2026-04-13 | 2026-04-13 | 45 |  |
| 53 |  | 返修 Defect repair proces | 2d | 2026-04-19 | 2026-04-20 | 52, 46 |  |
| 54 |  | 复喷 Second sandblasting process | 1d | 2026-04-21 | 2026-04-21 | 53 |  |
| 55 |  | 底漆-2号 Priming coat - Room 2 of Paint Warehouse | 2d | 2026-05-04 | 2026-05-05 | 54, 43 |  |
| 56 |  | 中间漆-2号 Intermediate coat- Room 2 of Paint Warehouse | 2d | 2026-05-06 | 2026-05-07 | 55 |  |
| 57 |  | 面漆-2号 Final coat- Room 2 of Paint Warehouse | 2d | 2026-05-08 | 2026-05-09 | 56 |  |
| 58 | 9 | **BOX13、15** | 28d | 2026-04-14 | 2026-05-11 |  |  |
| 59 |  | 初喷 Initial sandblasting | 1d | 2026-04-14 | 2026-04-14 | 52 |  |
| 60 |  | 返修 Defect repair proces | 2d | 2026-04-21 | 2026-04-22 | 59, 53 |  |
| 61 |  | 复喷 Second sandblasting process | 1d | 2026-04-23 | 2026-04-23 | 60 |  |
| 62 |  | 底漆-1号 Priming coat - Room 1 of Paint Warehouse | 2d | 2026-05-06 | 2026-05-07 | 61, 50 |  |
| 63 |  | 中间漆-1号 Intermediate coat- Room 1 of Paint Warehouse | 2d | 2026-05-08 | 2026-05-09 | 62 |  |
| 64 |  | 面漆-1号 Final coat- Room 1 of Paint Warehouse | 2d | 2026-05-10 | 2026-05-11 | 63 |  |
| 65 | 10 | **BOX16、17** | 31d | 2026-04-15 | 2026-05-15 |  |  |
| 66 |  | 初喷 Initial sandblasting | 1d | 2026-04-15 | 2026-04-15 | 59 |  |
| 67 |  | 返修 Defect repair proces | 2d | 2026-04-23 | 2026-04-24 | 66, 60 |  |
| 68 |  | 复喷 Second sandblasting process | 1d | 2026-04-25 | 2026-04-25 | 67 |  |
| 69 |  | 底漆-2号 Priming coat - Room 2 of Paint Warehouse | 2d | 2026-05-10 | 2026-05-11 | 68, 57 |  |
| 70 |  | 中间漆-2号 Intermediate coat- Room 2 of Paint Warehouse | 2d | 2026-05-12 | 2026-05-13 | 69 |  |
| 71 |  | 面漆-2号 Final coat- Room 2 of Paint Warehouse | 2d | 2026-05-14 | 2026-05-15 | 70 |  |

| ID | WBS | Task | Duration | Start | Finish | Predecessors |
| --- | --- | --- | --- | --- | --- | --- |
| 72 | 11 | **BOX9** | 32d | 2026-04-16 | 2026-05-17 |  |
| 73 |  | 初喷 Initial sandblasting | 1d | 2026-04-16 | 2026-04-16 | 66 |
| 74 |  | 返修 Defect repair proces | 2d | 2026-04-25 | 2026-04-26 | 73, 67 |
| 75 |  | 复喷 Second sandblasting process | 1d | 2026-04-27 | 2026-04-27 | 74 |
| 76 |  | 底漆-1号 Priming coat - Room 1 of Paint Warehouse | 2d | 2026-05-12 | 2026-05-13 | 75, 64 |
| 77 |  | 中间漆-1号 Intermediate coat- Room 1 of Paint Warehouse | 2d | 2026-05-14 | 2026-05-15 | 76 |
| 78 |  | 面漆-1号 Final coat- Room 1 of Paint Warehouse | 2d | 2026-05-16 | 2026-05-17 | 77 |

## Version 2 (saved 2026-04-13)

Last finish stays 2026-05-17. Complete tasks 1 → 4.

Changed:

| ID | Task | Start | Finish | Duration | Complete | Predecessors |
| --- | --- | --- | --- | --- | --- | --- |
| 2 | **BOX11、12** | 2026-04-08 → 2026-04-06 (-2d) | 2026-04-23 → 2026-04-17 (-6d) | 16d → 12d | 0% → 31% |  |
| 4 | 返修 Defect repair process |  |  |  | 60% → 80% |  |
| 5 | 复喷 Second sandblasting process |  |  |  | 0% → 80% |  |
| 6 | 底漆-1号 Priming coat - Room 1 of Paint Warehouse |  |  |  | 0% → 80% |  |
| 7 | 中间漆-1号 Intermediate coat- Room 1 of Paint Warehouse |  |  |  | 0% → 80% |  |
| 8 | 面漆-1号 Final coat- Room 1 of Paint Warehouse |  |  |  | 0% → 80% |  |
| 9 | **BOX6、7** | 2026-04-09 → 2026-04-07 (-2d) | 2026-04-27 → 2026-04-18 (-9d) | 19d → 12d | 0% → 50% |  |
| 10 | 初喷 Initial sandblasting |  |  |  | 0% → 100% | 3 → none |
| 11 | 返修 Defect repair proces | 2026-04-11 → 2026-04-08 (-3d) | 2026-04-14 → 2026-04-11 (-3d) |  | 0% → 100% | 4 → 10 |
| 12 | 复喷 Second sandblasting process | 2026-04-15 → 2026-04-12 (-3d) | 2026-04-15 → 2026-04-12 (-3d) |  | 0% → 100% |  |
| 13 | 底漆-2号 Priming coat - Room 2 of Paint Warehouse | 2026-04-16 → 2026-04-13 (-3d) | 2026-04-17 → 2026-04-14 (-3d) |  |  |  |
| 14 | 中间漆-2号 Intermediate coat- Room 2 of Paint Warehouse | 2026-04-18 → 2026-04-15 (-3d) | 2026-04-19 → 2026-04-16 (-3d) |  |  |  |
| 15 | 面漆-2号 Final coat- Room 2 of Paint Warehouse | 2026-04-20 → 2026-04-17 (-3d) | 2026-04-21 → 2026-04-18 (-3d) |  |  |  |
| 16 | **BOX2、3** | 2026-04-12 → 2026-04-08 (-4d) | 2026-05-05 → 2026-04-23 (-12d) | 24d → 16d |  |  |
| 17 | 初喷 Initial sandblasting |  |  |  |  | 10 → none |
| 20 | 底漆-1号 Priming coat - Room 1 of Paint Warehouse |  |  |  |  | 19, 8 → 19 |
| 23 | **BOX18、19** | 2026-04-06 → 2026-04-09 (+3d) | 2026-04-17 → 2026-04-24 (+7d) | 12d → 16d | 11% → 0% |  |
| 24 | 初喷 Initial sandblasting |  |  |  |  | 17 → none |
| 25 | 返修 Defect repair proces |  |  |  |  | 24, 18 → 24 |
| 27 | 底漆-2号 Priming coat - Room 2 of Paint Warehouse | 2026-04-22 → 2026-04-19 (-3d) | 2026-04-23 → 2026-04-20 (-3d) |  |  | 26, 15 → 26 |
| 28 | 中间漆-2号 Intermediate coat- Room 2 of Paint Warehouse | 2026-04-24 → 2026-04-21 (-3d) | 2026-04-25 → 2026-04-22 (-3d) |  |  |  |
| 29 | 面漆-2号 Final coat- Room 2 of Paint Warehouse | 2026-04-26 → 2026-04-23 (-3d) | 2026-04-27 → 2026-04-24 (-3d) |  |  |  |
| 30 | **BOX20、21** | 2026-04-07 → 2026-04-12 (+5d) | 2026-04-21 → 2026-05-05 (+14d) | 15d → 24d |  |  |
| 34 | 底漆-1号 Priming coat - Room 1 of Paint Warehouse |  |  |  |  | 33, 43 → 33 |
| 38 | 初喷 Initial sandblasting |  |  |  |  | 24 → none |
| 39 | 返修 Defect repair proces |  |  |  |  | 38, 25 → 38 |
| 41 | 底漆-1号 Priming coat - Room 1 of Paint Warehouse |  |  |  |  | 40, 22 → 40 |
| 44 | **BOX14、1** |  | 2026-05-03 → 2026-04-30 (-3d) | 23d → 20d |  |  |
| 48 | 底漆-2号 Priming coat - Room 2 of Paint Warehouse | 2026-04-28 → 2026-04-25 (-3d) | 2026-04-29 → 2026-04-26 (-3d) |  |  |  |
| 49 | 中间漆-2号 Intermediate coat- Room 2 of Paint Warehouse | 2026-04-30 → 2026-04-27 (-3d) | 2026-05-01 → 2026-04-28 (-3d) |  |  |  |
| 50 | 面漆-2号 Final coat- Room 2 of Paint Warehouse | 2026-05-02 → 2026-04-29 (-3d) | 2026-05-03 → 2026-04-30 (-3d) |  |  |  |
| 51 | **BOX4、5** |  | 2026-05-09 → 2026-05-06 (-3d) | 27d → 24d |  |  |
| 55 | 底漆-2号 Priming coat - Room 2 of Paint Warehouse | 2026-05-04 → 2026-05-01 (-3d) | 2026-05-05 → 2026-05-02 (-3d) |  |  |  |
| 56 | 中间漆-2号 Intermediate coat- Room 2 of Paint Warehouse | 2026-05-06 → 2026-05-03 (-3d) | 2026-05-07 → 2026-05-04 (-3d) |  |  |  |
| 57 | 面漆-2号 Final coat- Room 2 of Paint Warehouse | 2026-05-08 → 2026-05-05 (-3d) | 2026-05-09 → 2026-05-06 (-3d) |  |  |  |
| 65 | **BOX16、17** |  | 2026-05-15 → 2026-05-12 (-3d) | 31d → 28d |  |  |
| 69 | 底漆-2号 Priming coat - Room 2 of Paint Warehouse | 2026-05-10 → 2026-05-07 (-3d) | 2026-05-11 → 2026-05-08 (-3d) |  |  |  |
| 70 | 中间漆-2号 Intermediate coat- Room 2 of Paint Warehouse | 2026-05-12 → 2026-05-09 (-3d) | 2026-05-13 → 2026-05-10 (-3d) |  |  |  |
| 71 | 面漆-2号 Final coat- Room 2 of Paint Warehouse | 2026-05-14 → 2026-05-11 (-3d) | 2026-05-15 → 2026-05-12 (-3d) |  |  |  |

## Version 3 (saved 2026-04-17)

Last finish stays 2026-05-17. Complete tasks 4 → 14.

Changed:

| ID | Task | Start | Finish | Duration | Complete |
| --- | --- | --- | --- | --- | --- |
| 2 | **BOX11、12** | 2026-04-06 → 2026-04-07 (+1d) | 2026-04-17 → 2026-04-18 (+1d) |  | 31% → 38% |
| 3 | 初喷 Initial sandblasting | 2026-04-06 → 2026-04-07 (+1d) | 2026-04-06 → 2026-04-07 (+1d) |  |  |
| 4 | 返修 Defect repair process | 2026-04-07 → 2026-04-08 (+1d) | 2026-04-10 → 2026-04-11 (+1d) |  | 80% → 100% |
| 5 | 复喷 Second sandblasting process | 2026-04-11 → 2026-04-12 (+1d) | 2026-04-11 → 2026-04-12 (+1d) |  | 80% → 100% |
| 6 | 底漆-1号 Priming coat - Room 1 of Paint Warehouse | 2026-04-12 → 2026-04-13 (+1d) | 2026-04-13 → 2026-04-14 (+1d) |  | 80% → 100% |
| 7 | 中间漆-1号 Intermediate coat- Room 1 of Paint Warehouse | 2026-04-14 → 2026-04-15 (+1d) | 2026-04-15 → 2026-04-16 (+1d) |  | 80% → 100% |
| 8 | 面漆-1号 Final coat- Room 1 of Paint Warehouse | 2026-04-16 → 2026-04-17 (+1d) | 2026-04-17 → 2026-04-18 (+1d) |  | 80% → 100% |
| 9 | **BOX6、7** | 2026-04-07 → 2026-04-08 (+1d) | 2026-04-18 → 2026-04-19 (+1d) |  | 50% → 100% |
| 10 | 初喷 Initial sandblasting | 2026-04-07 → 2026-04-08 (+1d) | 2026-04-07 → 2026-04-08 (+1d) |  |  |
| 11 | 返修 Defect repair proces | 2026-04-08 → 2026-04-09 (+1d) | 2026-04-11 → 2026-04-12 (+1d) |  |  |
| 12 | 复喷 Second sandblasting process | 2026-04-12 → 2026-04-13 (+1d) | 2026-04-12 → 2026-04-13 (+1d) |  |  |
| 13 | 底漆-2号 Priming coat - Room 2 of Paint Warehouse | 2026-04-13 → 2026-04-14 (+1d) | 2026-04-14 → 2026-04-15 (+1d) |  | 0% → 100% |
| 14 | 中间漆-2号 Intermediate coat- Room 2 of Paint Warehouse | 2026-04-15 → 2026-04-16 (+1d) | 2026-04-16 → 2026-04-17 (+1d) |  | 0% → 100% |
| 15 | 面漆-2号 Final coat- Room 2 of Paint Warehouse | 2026-04-17 → 2026-04-18 (+1d) | 2026-04-18 → 2026-04-19 (+1d) |  | 0% → 100% |
| 16 | **BOX2、3** | 2026-04-08 → 2026-04-09 (+1d) | 2026-04-23 → 2026-04-18 (-5d) | 16d → 10d | 0% → 30% |
| 17 | 初喷 Initial sandblasting | 2026-04-08 → 2026-04-09 (+1d) | 2026-04-08 → 2026-04-09 (+1d) |  | 0% → 100% |
| 18 | 返修 Defect repair proces | 2026-04-09 → 2026-04-10 (+1d) | 2026-04-10 → 2026-04-11 (+1d) |  | 0% → 100% |
| 19 | 复喷 Second sandblasting process | 2026-04-11 → 2026-04-12 (+1d) | 2026-04-11 → 2026-04-12 (+1d) |  |  |
| 20 | 底漆-1号 Priming coat - Room 1 of Paint Warehouse | 2026-04-18 → 2026-04-13 (-5d) | 2026-04-19 → 2026-04-14 (-5d) |  |  |
| 21 | 中间漆-1号 Intermediate coat- Room 1 of Paint Warehouse | 2026-04-20 → 2026-04-15 (-5d) | 2026-04-21 → 2026-04-16 (-5d) |  |  |
| 22 | 面漆-1号 Final coat- Room 1 of Paint Warehouse | 2026-04-22 → 2026-04-17 (-5d) | 2026-04-23 → 2026-04-18 (-5d) |  |  |
